Task_ID,Phase,Week,Owner,Backup_Owner,Reviewer,Priority,Module,Source_Area,Title,Description,Start_Offset_Days,Finish_Offset_Days,Workload_Category,Base_Hours,Contingency_Hours,Total_Hours,Deliverable,Interface_Contract,Prerequisites,Integration_Prerequisite,Test_ID,Verification_Method,Acceptance_Criteria,Failure_Mode,Viva_Question_Topic,Expected_Answer,Follow_Up_Question,Evidence_Artifact,Status
LG-A-001,P0,W1,A,B,B,P0,Shared.Protocol,Networking,Chốt wire contract và protocol fixtures,"Đặc tả cấu trúc envelope JSON 6 trường (version, messageType, requestId, deviceId, sentAtUtc, payload) và 16 fixtures mẫu.",1,2,P0 Core,2.0,0.5,2.5,docs/spec/CONTRACT_MATRIX.md & protocol fixtures,"Outer envelope 6 fields, Big-Endian uint32 length prefix, UTF-8 JSON",None,None,TEST-A01,Schema validation tool và JSON parser kiểm tra fixture mẫu,"Tất cả wire catalog có fixture JSON hợp lệ, không sai lệch tên trường",Nếu lệch tên trường thì Central hoặc Admin không deserialize được; rollback về CONTRACT_MATRIX freeze,Framing nhị phân và ranh giới thông điệp TCP,TCP là stream-oriented không bảo toàn ranh giới; cần 4 byte length-prefix để bên nhận biết chính xác kích thước frame,Tại sao dùng Big-Endian mà không dùng Little-Endian mặc định của x86?,"docs/spec/CONTRACT_MATRIX.md, fixture JSON files",XONG
LG-A-002,P0,W1,A,B,B,P0,Shared.Protocol,Networking,FrameCodec và xử lý partial reads / message framing,"Hiện thực FrameCodec với ReadExactlyBytesAsync xử lý partial read, ghép frame, kiểm tra MaxFrameSize 256 KiB và ném EndOfStreamException khi EOF.",2,3,P0 Core,3.5,0.5,4.0,FrameCodec.cs & Unit tests,"FrameCodec.ReadExactlyBytesAsync, MaxFrameSize = 262144 bytes",LG-A-001,None,TEST-A02,"Unit test đọc 1-byte chunking, 3 frame liền mạch và frame vượt 256 KiB",Pass 100% kịch bản unit test; không nuốt ngoại lệ stream; không cấp phát buffer khi frame size quá lớn,Đọc thiếu byte dẫn đến parse JSON hỏng; ném EndOfStreamException và đóng kết nối an toàn,Hiện tượng Partial Read và cách xử lý trong socket TCP,Stream.ReadAsync có thể trả về ít byte hơn yêu cầu; phải lặp vòng lặp tích lũy byte cho đến khi đủ count,Tại sao không dùng ReadAsync trả về 0 để tiếp tục đợi dữ liệu?,"tools/validation/test_frame_codec/Program.cs",XONG
LG-A-003,P0,W1,A,B,B,P0,Agent.Core,Networking,Agent TCP connection và writer queue,Khởi tạo kết nối TCP client tới Central Server; quản lý hàng đợi gửi tuần tự bằng Channel Bounded để đảm bảo Single Writer trên Socket.,3,4,P0 Core,2.5,0.5,3.0,AgentSocketClient.cs & WriterLoop,"TcpClient, NetworkStream, Channel<byte[]> Bounded(256), FullMode.Wait",LG-A-002,LG-B-001,TEST-A03,Chạy song song nhiều luồng ghi vào writer channel tới Central Server,"Dữ liệu trên socket được ghi tuần tự, không bị đan xen byte giữa các frame",Nhiều luồng ghi đồng thời vào NetworkStream làm hỏng framing; Channel bảo đảm đúng 1 luồng ghi duy nhất,Single Writer pattern trên TCP socket đa luồng,NetworkStream không an toàn đa luồng cho các thao tác ghi đồng thời; Channel làm hàng đợi trung chuyển đảm bảo 1 consumer ghi tuần tự,"Nếu hàng đợi channel bị đầy thì xử lý thế nào để không crash ứng dụng? (BoundedChannelOptions(256), FullMode.Wait)","Trace log socket client, Agent output log",CHƯA LÀM
LG-A-004,P0,W2,A,C,C,P0,Agent.Metrics,System,"Thu thập CPU, RAM, Uptime hệ thống",Thu thập định kỳ chỉ số tài nguyên Windows bằng PerformanceCounter hoặc Win32 API; không gây nghẽn luồng thu thập.,5,7,P0 Core,2.5,0.5,3.0,MetricsCollector.cs & MetricsService.cs,"IMetricsCollector: ReadCpuPercent(), ReadMemoryBytes(), ReadUptimeSeconds()",LG-A-001,None,TEST-A04,Chạy trên Windows thật; đối chiếu số liệu CPU/RAM với Task Manager,"Chỉ số CPU/RAM đo liên tục mỗi 5s sai lệch <= 5% so với Task Manager, thời gian thu thập < 100ms",Lỗi truy cập counter hiệu năng; fallback sang WMI hoặc trả giá trị an toàn kèm cờ lỗi,Kỹ thuật thu thập chỉ số hiệu năng hệ điều hành Windows,Dùng PerformanceCounter lấy mẫu delta giữa 2 thời điểm; cần chạy trong background thread để tránh giật giao diện,Tại sao lần đọc đầu tiên của CPU PerformanceCounter luôn trả về 0?,Raw metrics log so sánh với Task Manager,CHƯA LÀM
LG-A-005,P0,W2,A,B,B,P0,Agent.Transport,Networking,Tự động kết nối lại khi rớt mạng (Exponential Backoff + Jitter),"Cơ chế tự động kết nối lại khi mất mạng với Exponential Backoff (1s, 2s, 4s... tối đa 30s) + Jitter 10%; tái lập phiên an toàn.",8,9,P0 Core,2.5,0.5,3.0,AgentSocketClient.cs (Reconnect logic),"Backoff: 1s, 2s, 4s, 8s, max 30s + jitter 10%",LG-A-003,LG-B-001,TEST-A05,Ngắt mạng 30s rồi khôi phục; kiểm tra client tự động tái kết nối,Tự động kết nối lại theo backoff; không bị treo vòng lặp; thông báo trạng thái kết nối rõ ràng,Reconnect storm khi server restart; Jitter phân tán thời điểm kết nối giúp giảm xung đột,Thuật toán Exponential Backoff kèm Jitter,Nhân đôi thời gian chờ sau mỗi lần thử kèm độ lệch ngẫu nhiên để tránh hiện tượng mọi client đồng loạt kết nối lại cùng lúc,Jitter ngẫu nhiên giúp phân bổ đồ thị tải như thế nào?,"Reconnect timeline capture, trace log",CHƯA LÀM
LG-A-006,P0,W2,A,B,B,P0,Agent.Transport,Networking,Bộ nhớ giữ dữ liệu ngoại tuyến ReplayBuffer,Hàng đợi ReplayBuffer lưu trữ tối đa 50 batches (250s dữ liệu); chỉ lưu METRIC_BATCH; FIFO Drop-Oldest; gắn cờ isReplay=true khi gửi bù; không lưu HEARTBEAT/SERVICE_STATUS.,10,11,P0 Core,2.5,0.5,3.0,ReplayBuffer.cs,"Capacity = 50 batches, FIFO Drop-Oldest, payload.isReplay = true, METRIC_BATCH only","LG-A-004, LG-A-005",LG-B-005,TEST-A06,Mô phỏng mất mạng tạo 60 mẻ số liệu; kiểm tra 50 mẻ mới nhất được giữ và gửi bù có isReplay=true,Lưu đúng 50 mẻ; tự drop mẻ cũ nhất khi đầy; gửi bù thành công khi mạng có lại; không replay Heartbeat,Tràn RAM nếu buffer vô hạn; giới hạn 50 batches bảo vệ máy trạm an toàn tuyệt đối,Chính sách hàng đợi ReplayBuffer ngoại tuyến,Chỉ lưu METRIC_BATCH vì nhịp tim cũ không còn ý nghĩa thời gian thực; giới hạn 50 mẻ và drop-oldest để bảo vệ tài nguyên,Tại sao cấm lưu trữ HEARTBEAT và SERVICE_STATUS vào ReplayBuffer?,"ReplayBuffer unit test log, trace đối soát dữ liệu gửi bù",CHƯA LÀM
LG-A-007,P0,W3,A,C,C,P0,Agent.Service,Networking,Giám sát dịch vụ mạng cổng 80 và 8080 (ServiceMonitor),"Thăm dò cổng TCP nội bộ theo danh sách cấu hình (port 80, port 8080); timeout 2s mỗi cổng; báo cáo trạng thái SERVICE_STATUS.",12,13,P0 Core,2.0,0.5,2.5,ServiceMonitor.cs,"SERVICE_STATUS (probes: [{port, serviceName, isUp, responseMs}]), timeout 2000ms",LG-A-003,LG-B-006,TEST-A07,Mô phỏng mở và đóng port 80/8080; ghi nhận phản hồi probe,Phát hiện port mở trả isUp=true < 50ms; port đóng trả isUp=false sau timeout 2s,Socket connect bị treo vô hạn; sử dụng CancellationTokenSource với timeout 2000ms để hủy kết nối,Thăm dò cổng TCP và xử lý timeout bất đồng bộ,Dùng TcpClient.ConnectAsync kèm CancellationToken hoặc Task.WhenAny với Task.Delay để ép timeout 2s,Sự khác biệt giữa cổng đóng (RST) và cổng bị tường lửa drop (Timeout)?,"Service probe status log, timing benchmark",CHƯA LÀM
LG-A-008,P0,W3,A,B,B,P0,Agent.Testing,Testing,Xử lý ngắt kết nối đột ngột và đóng socket an toàn,"Kiểm thử các kịch bản ngắt kết nối đột ngột (server crash, tắt tiến trình bằng Ctrl+C, ngắt cáp mạng); giải phóng socket an toàn không rò rỉ tài nguyên.",14,15,Test/Harness,2.0,0.5,2.5,AgentSocketClient.cs (Graceful shutdown & error handling),"Dispose pattern, CancellationToken, Safe socket close",LG-A-005,None,TEST-A08,Kill Central Server đột ngột; quan sát Agent bắt SocketException và chuyển sang trạng thái chờ kết nối lại,Agent không bị crash tiến trình; giải phóng socket cũ; tự kích hoạt vòng lặp reconnect,Ngoại lệ SocketException không được bắt làm sập Agent; bọc try-catch toàn diện tại tầng I/O,Đóng socket an toàn và quản lý ngoại lệ mạng,Luôn đóng luồng NetworkStream trước khi đóng TcpClient; dùng using hoặc Dispose an toàn,Tại sao cần kiểm tra connected state trước khi gửi dữ liệu?,"Disconnect test log, console trace",CHƯA LÀM
LG-A-009,P0,W4,A,B,B,P0,Agent.Integration,Integration,Kiểm thử tải thật với máy ảo Ubuntu / môi trường thực tế,Chạy Agent trên môi trường thực tế mạng LAN phòng máy UIT hoặc kết nối tới máy chủ/dịch vụ đặt trên máy ảo Ubuntu.,16,18,Tích hợp,3.0,0.5,3.5,Báo cáo thử nghiệm thực tế LAN / VM,TCP/IP kết nối qua địa chỉ IP LAN thật,"LG-A-006, LG-A-007","LG-B-005, LG-C-007",TEST-A09,Chạy Agent gửi dữ liệu tới Central trên máy thật khác trong LAN phòng máy,Giao tiếp thành công qua IP LAN thật; hiển thị trạng thái Online trên Dashboard của Thành viên C,Windows Defender Firewall chặn port; thêm rule cho phép inbound/outbound TCP port,Thực tế kiểm thử mạng LAN so với localhost,Localhost bỏ qua tường lửa và phân mảnh gói tin thực tế; test LAN kiểm chứng đúng hoạt động mạng,Làm thế nào xác định địa chỉ IP máy server khi phòng máy dùng DHCP?,Ảnh chụp màn hình kết nối mạng LAN thật,CHƯA LÀM
LG-B-001,P0,W1,B,C,C,P0,Central.Server,Networking,Mở cổng Socket TCP 5000 đón nhận kết nối,Khởi tạo CentralServer với TcpListener lắng nghe cổng 5000; vòng lặp AcceptTcpClientAsync bất đồng bộ đón nhận client.,1,3,P0 Core,2.5,0.5,3.0,CentralServer.cs,"TcpListener port 5000, async accept loop, FrameCodec integration",LG-A-002,None,TEST-B01,"Chạy Central Server, dùng telnet hoặc client kết nối tới port 5000",Server lắng nghe cổng 5000 thành công; chấp nhận kết nối bất đồng bộ không nghẽn,Cổng 5000 bị chiếm dụng; bắt ngoại lệ SocketException và thông báo lỗi rõ ràng,Mô hình I/O bất đồng bộ trên máy chủ mạng,"Dùng async/await tận dụng I/O Completion Ports của HĐH, không tạo mới 1 Thread vật lý cho mỗi client",Tại sao không nên tạo mới Thread cho mỗi kết nối socket?,Server console log in ra Listening on port 5000...,CHƯA LÀM
LG-B-002,P0,W1,B,A,A,P0,Central.Auth,Networking,Bắt tay và xác thực Agent qua HELLO và AUTH,Tiếp nhận kết nối mới; xử lý gói tin HELLO_AGENT -> phản hồi HELLO_ACK; xử lý AUTH_AGENT -> phản hồi AUTH_RESULT.,3,5,P0 Core,2.5,0.5,3.0,ClientConnection.cs (Handshake logic),"HELLO_AGENT, HELLO_ACK, AUTH_AGENT, AUTH_RESULT payloads","LG-B-001, LG-A-001",LG-A-003,TEST-B02,Cho Agent kết nối; kiểm tra quá trình bắt tay và log xác thực trên Central,Agent gửi HELLO/AUTH hợp lệ được Server xác thực thành công; từ chối khi sai token,Client gửi bản tin khác trước khi hoàn tất bắt tay; server ngắt kết nối an toàn,Quy trình bắt tay ứng dụng trên nền TCP,"Sau khi 3-way handshake TCP hoàn tất, tầng ứng dụng cần bắt tay HELLO/AUTH để xác thực danh tính client trước khi nhận dữ liệu",Tại sao cần gửi nonce ngẫu nhiên trong gói bắt tay?,Handshake trace log giữa Agent và Central,CHƯA LÀM
LG-B-003,P0,W2,B,A,A,P0,Central.Rule,Networking,Tiếp nhận nhịp tim và theo dõi máy tắt (Liveness deadline 20s),Nhận HEARTBEAT mỗi 5s từ Agent; dùng Stopwatch đơn điệu máy chủ theo dõi; chuyển sang OFFLINE khi quá 20s (15s + 5s grace).,6,8,P0 Core,2.5,0.5,3.0,LivenessMonitor.cs & MonotonicLivenessRegistry.cs,"HEARTBEAT payload, Liveness deadline = 20s (3 intervals 15s + 5s grace)",LG-B-002,LG-A-006,TEST-B03,Tắt Agent đột ngột; đo thời gian server công bố thiết bị OFFLINE,Chuyển trạng thái sang OFFLINE sau đúng 20s ± 500ms; phát sự kiện cập nhật tới Admin,Lệch giờ giữa client và server; máy chủ chỉ sử dụng đồng hồ Stopwatch nội bộ độc lập,Đánh giá trạng thái Liveness bằng đồng hồ đơn điệu máy chủ,Không tin tưởng mốc thời gian của client gửi lên; dùng thời gian thực trôi qua trên server để tránh lỗi Clock Drift,Tại sao cần khoảng thời gian ân hạn (Grace Period) 5 giây?,"Liveness deadline event log, timeline đối chiếu",CHƯA LÀM
LG-B-004,P0,W2,B,C,C,P0,Central.Auth,Security,Phân quyền tài khoản máy chủ RBAC,"Xác thực tài khoản quản trị bằng PBKDF2; phân quyền RBAC phía server: Admin (toàn quyền), Operator (ACK, Start, Resolve), Viewer (chỉ xem).",9,10,P0 Core,2.5,0.5,3.0,AuthService.cs & ClientConnection.cs (RBAC checks),"RBAC: Admin, Operator, Viewer; FixedTimeEquals",LG-B-002,LG-C-002,TEST-B04,Đăng nhập với vai trò Viewer/Operator rồi cố tình gửi lệnh cấm; kiểm tra server từ chối,Server từ chối mọi lệnh không đủ quyền dù client có gửi thẳng qua socket; thông báo lỗi phân quyền,Bypass phân quyền từ giao diện; Server-side RBAC enforcement là chốt chặn bảo mật bắt buộc,Kiểm soát phân quyền bắt buộc phía máy chủ (Server-side RBAC),Không tin tưởng ứng dụng client; mọi request phải được kiểm tra quyền tại server trước khi thực thi,Tại sao việc ẩn nút bấm trên WinForms không được coi là giải pháp bảo mật?,"RBAC security audit log, test trace từ chối quyền",CHƯA LÀM
LG-B-005,P0,W2,B,A,A,P0,Central.Database,Storage,Lập trình CSDL & lưu số liệu máy vào SQL Server,Viết schema.sql tạo bảng dbo.MetricSamples và tạo DatabaseRepository.cs lưu trữ mẻ telemetry; khử trùng lặp qua batchId.,11,12,P0 Core,3.0,0.5,3.5,schema.sql & DatabaseRepository.cs,"SQL Server, dbo.MetricSamples, batchId dedup, BATCH_ACK","LG-B-002, LG-A-001",LG-A-006,TEST-B05,Chạy script tạo bảng; cho Agent gửi telemetry; truy vấn SSMS kiểm tra dữ liệu,"Dữ liệu CPU, RAM, Uptime được lưu đầy đủ vào CSDL; gửi lại BATCH_ACK cho client sau khi commit",Lỗi kết nối SQL Server; bọc retry logic và ghi log lỗi chi tiết,Lưu trữ dữ liệu đo đạc thời gian thực vào CSDL quan hệ,Gom mẻ bản tin để giảm số lần gọi SQL INSERT; sử dụng Transaction đảm bảo tính toàn vẹn,Tại sao cần gửi BATCH_ACK chỉ sau khi CSDL đã commit thành công?,"schema.sql, ảnh chụp truy vấn bảng dbo.MetricSamples trong SSMS",CHƯA LÀM
LG-B-006,P0,W3,B,C,C,P0,Central.Rule,RuleEngine,Bộ quy tắc phát hiện sự cố RuleEngine,"Bộ đánh giá vi phạm ngưỡng tài nguyên với thuật toán Hysteresis: HIGH_CPU khi >= 90% (streak 3), phục hồi khi <= 75% (streak 3); RAM >= 85%; SERVICE_DOWN.",13,14,P0 Core,2.5,0.5,3.0,RuleEngine.cs,"Trigger: CPU >= 90% (streak 3), Recovery: CPU <= 75% (streak 3); RAM >= 85%",LG-B-005,None,TEST-B06,Bơm chuỗi số liệu biến thiên qua RuleEngine; kiểm tra bật/tắt sự cố đúng chuỗi,Bật sự cố sau đúng 3 mẫu vi phạm liên tiếp; không tắt cảnh báo ở mức tức thời; chỉ phục hồi khi đủ 3 mẫu an toàn,Cảnh báo chớp nháy liên tục (flapping); cơ chế Hysteresis và Streak loại bỏ triệt để,Cơ chế trễ (Hysteresis) và chuỗi mẫu vi phạm (Streak),Tạo khoảng cách an toàn giữa ngưỡng kích hoạt và ngưỡng phục hồi để loại bỏ các đỉnh tải tức thời,Tại sao không nên tạo sự cố ngay khi CPU chạm 90% ở 1 mẫu duy nhất?,"RuleEngine unit test log, biểu đồ trạng thái",CHƯA LÀM
LG-B-007,P0,W3,B,C,C,P0,Central.Incident,Storage,Vòng đời sự cố và chống sửa đè OCC bằng RowVersion,Quản lý vòng đời sự cố (OPEN -> ACK -> START -> RESOLVE); kiểm soát tranh chấp lạc quan OCC bằng kiểu RowVersion 8-byte token; trả về 409 Conflict khi đè dữ liệu.,15,16,P0 Core,2.5,0.5,3.0,DatabaseRepository.cs (Incident OCC logic),"Optimistic Concurrency Control via rowversion, error ERR_CONCURRENCY_VIOLATION (409)","LG-B-005, LG-B-006",LG-C-005,TEST-B07,Mô phỏng 2 Admin cùng gửi lệnh cập nhật trên 1 sự cố tại cùng mốc thời gian,"1 Admin cập nhật thành công, 1 Admin nhận mã lỗi 409 Conflict kèm dữ liệu mới nhất",Ghi đè mất dữ liệu (Lost Update); kiểm tra WHERE rowversion = @expected ngăn chặn triệt để,Kiểm soát tương tranh lạc quan (OCC) bằng kiểu rowversion,Đính kèm rowversion khi gửi lệnh cập nhật; nếu số dòng ảnh hưởng bằng 0 nghĩa là dữ liệu đã bị người khác sửa,Tại sao OCC phù hợp hơn Pessimistic Locking trong hệ thống giám sát nhiều người xem?,"OCC concurrency test report, trace log xung đột",CHƯA LÀM
LG-B-008,P0,W4,B,A,A,P0,Central.Testing,Testing,Tách riêng CSDL kiểm thử LabGuardTestDb,Cấu hình chuỗi kết nối và môi trường cô lập CSDL kiểm thử LabGuardTestDb để bộ test tự động không ghi đè vào CSDL vận hành chính.,17,18,Test/Harness,2.0,0.5,2.5,Cấu hình CSDL kiểm thử & test harness,Connection string isolation: LabGuardTestDb vs LabGuardDb,LG-B-005,None,TEST-B08,Chạy bộ test tích hợp; kiểm tra dữ liệu phát sinh nằm hoàn toàn trong LabGuardTestDb,CSDL LabGuardDb không bị ảnh hưởng khi chạy test; tự động dọn dẹp sau khi test xong,Test chạy vào CSDL thật làm sai lệch số liệu thực tế; cô lập hoàn toàn connection string,Chiến lược cô lập môi trường kiểm thử CSDL,Tách riêng database thử nghiệm giúp chạy test tự động nhiều lần mà không sợ làm bẩn hay mất dữ liệu vận hành,Làm thế nào tái tạo lại schema sạch cho CSDL kiểm thử?,"Test configuration file, log kết nối LabGuardTestDb",CHƯA LÀM
LG-B-009,P0,W4,B,C,C,P0,Central.Incident,Storage,Ghi nhận UserId kỹ thuật viên xử lý vào bảng sự cố,Bổ sung cột AssignedToUserId trong bảng dbo.Incidents và ghi nhật ký phân công vào bảng dbo.IncidentHistory; xử lý lệnh INCIDENT_ASSIGN.,19,20,P0 Core,2.0,0.5,2.5,DatabaseRepository.cs & Incident schema update,"AssignedToUserId, INCIDENT_ASSIGN payload, dbo.IncidentHistory audit",LG-B-007,LG-C-008,TEST-B09,Gửi lệnh gán người sửa; truy vấn CSDL kiểm tra cột AssignedToUserId và bảng lịch sử,Cột AssignedToUserId có giá trị đúng; bảng IncidentHistory có dòng ghi nhận thời điểm và người gán,Gán cho UserId không tồn tại; kiểm tra khóa ngoại FK với bảng dbo.Users,Theo dõi lịch sử kiểm toán (Audit Trail) trong hệ thống quản lý sự cố,Lưu vết mọi thay đổi trạng thái và người xử lý vào bảng lịch sử riêng để phục vụ tra cứu sau này,Tại sao không nên ghi đè trực tiếp mà cần bảng IncidentHistory?,"SQL query kết quả gán việc, audit history log",CHƯA LÀM
LG-C-001,P0,W1,C,B,B,P0,Admin.UI,UI,Thiết kế màn hình chính WinForms,"Xây dựng khung giao diện chính WinForms nền sáng trên DashboardForm.cs; bố trí 2 DataGridView (danh sách máy, sự cố) và cụm nút bấm.",1,3,P0 Core,2.5,0.5,3.0,DashboardForm.cs (Layout),"WinForms native controls, UI layout standards, DoubleBuffered",None,None,TEST-C01,"Chạy ứng dụng WinForms, kiểm tra giao diện và co giãn cửa sổ","Giao diện hiển thị rõ ràng, bố cục cân đối, không vỡ layout khi co giãn cửa sổ",Giao diện bị giật (flickering); bật thuộc tính DoubleBuffered,Thiết kế giao diện WinForms chuẩn mực và thân thiện,"Sử dụng tông màu sáng chuyên nghiệp, bố cục phân cấp rõ ràng và hỗ trợ đầy đủ phím tắt điều hướng",Tại sao đồ án lựa chọn công nghệ Windows Forms?,Ảnh chụp màn hình DashboardForm hiển thị control,CHƯA LÀM
LG-C-002,P0,W1,C,B,B,P0,Admin.Network,Networking,Kết nối ngầm tới máy chủ Central,Hiện thực AdminClient.cs mở Socket TCP tới Central Server (cổng 5000); gửi lệnh LOGIN và nhận phản hồi xác thực LOGIN_RESULT.,3,5,P0 Core,2.5,0.5,3.0,AdminClient.cs,"TcpClient, NetworkStream, FrameCodec, LOGIN / LOGIN_RESULT",LG-A-002,"LG-B-001, LG-B-004",TEST-C02,Đăng nhập tài khoản admin; kiểm tra log server nhận kết nối và trả về token,Đăng nhập thành công mở giao diện quản trị; đăng nhập sai mật khẩu hiện thông báo lỗi thân thiện,Đóng băng giao diện do gọi kết nối đồng bộ; luôn dùng ConnectAsync và await,Lập trình mạng bất đồng bộ trong ứng dụng WinForms,"Thao tác I/O mạng phải bất đồng bộ để giải phóng UI Thread, giữ chuột và bàn phím luôn phản hồi",Sự khác biệt giữa gọi đồng bộ Connect() và bất đồng bộ ConnectAsync()?,"Login success trace log, token trong bộ nhớ",CHƯA LÀM
LG-C-003,P0,W2,C,A,A,P0,Admin.UI,UI,Bảng danh sách máy tính DataGridView,"Đổ dữ liệu thiết bị (DeviceId, Status ONLINE/OFFLINE, CPU%, RAM%, Uptime) lên bảng DataGridView; cập nhật mượt mà qua BeginInvoke.",6,8,P0 Core,2.5,0.5,3.0,DashboardForm.cs (Device grid logic),"Control.BeginInvoke, DeviceViewModel, Color coding (Xanh/Đỏ)","LG-C-001, LG-C-002",LG-B-003,TEST-C03,Bật/tắt Agent; kiểm tra bảng thiết bị cập nhật trạng thái và màu sắc,"Máy Online hiện màu xanh lá, Offline hiện màu đỏ; 0 ngoại lệ Cross-thread",Truy cập control từ luồng mạng ngầm gây InvalidOperationException; luôn bọc BeginInvoke,An toàn đa luồng trong WinForms (Thread Marshaling),Control trong WinForms gắn liền với UI Thread (STA); mọi cập nhật từ luồng mạng ngầm phải chuyển qua BeginInvoke,Tại sao BeginInvoke tốt hơn Invoke đồng bộ trong ứng dụng nhận dữ liệu liên tục?,Ảnh chụp bảng thiết bị cập nhật thời gian thực,CHƯA LÀM
LG-C-004,P0,W2,C,B,B,P0,Admin.UI,UI,Bảng danh sách sự cố DataGridView,Hiển thị danh sách sự cố thời gian thực do Central Server phát sinh; tô màu cảnh báo theo mức độ nghiêm trọng.,9,10,P0 Core,2.5,0.5,3.0,DashboardForm.cs (Incident grid logic),"IncidentViewModel, Severity colors (Vàng/Cam/Đỏ)",LG-C-003,LG-B-006,TEST-C04,Kích hoạt sự cố quá tải CPU từ Agent; kiểm tra bảng sự cố xuất hiện dòng cảnh báo,Sự cố mới xuất hiện tức thời trên bảng kèm âm thanh hoặc đổi màu cảnh báo rõ ràng,Bảng bị giật cuộn khi có dữ liệu mới; duy trì chỉ mục dòng đang chọn,Trực quan hóa cảnh báo trong phần mềm giám sát phòng máy,Kết hợp màu sắc trực quan (vàng/đỏ) cùng văn bản mô tả cụ thể để người trực dễ nhận biết và thao tác,Làm thế nào để người dùng không bị bỏ lỡ sự cố nghiêm trọng?,Ảnh chụp bảng sự cố hiển thị cảnh báo quá tải,CHƯA LÀM
LG-C-005,P0,W3,C,B,B,P0,Admin.Command,UI,Nút bấm tiếp nhận sự cố ACK,Lập trình sự kiện bấm nút ACK trên dòng sự cố được chọn; gửi gói tin INCIDENT_ACK lên Central; chuyển trạng thái thành ACKNOWLEDGED.,11,12,P0 Core,2.0,0.5,2.5,DashboardForm.cs (btnAck_Click handler),"INCIDENT_ACK payload, IncidentId, expected RowVersion",LG-C-004,LG-B-007,TEST-C05,"Chọn một sự cố đang OPEN, bấm ACK; kiểm tra trạng thái chuyển sang ACKNOWLEDGED",Trạng thái sự cố cập nhật ngay; nút ACK mờ đi; Server ghi nhận thời điểm tiếp nhận,Bấm liên tục nhiều lần; vô hiệu hóa nút bấm trong lúc chờ server phản hồi,Xử lý tương tác nút bấm và chống gửi lệnh lặp (Idempotent UI),Vô hiệu hóa nút bấm ngay khi click và bật lại khi nhận kết quả để tránh người dùng click đúp gửi lệnh lặp,Làm thế nào hiển thị trạng thái đang xử lý (Loading indicator) cho người dùng?,Ảnh chụp màn hình sau khi bấm ACK thành công,CHƯA LÀM
LG-C-006,P0,W3,C,B,B,P0,Admin.Command,UI,Nút bấm bắt đầu sửa Start,Lập trình sự kiện bấm nút Start; gửi gói tin INCIDENT_START lên Central; chuyển trạng thái sự cố sang IN_PROGRESS.,13,14,P0 Core,2.0,0.5,2.5,DashboardForm.cs (btnStart_Click handler),"INCIDENT_START payload, WorkflowState = IN_PROGRESS",LG-C-005,LG-B-007,TEST-C06,"Chọn sự cố đã ACK, bấm Start; kiểm tra trạng thái chuyển sang IN_PROGRESS",Trạng thái cập nhật thành công; hiển thị rõ ràng kỹ thuật viên đang tiến hành sửa chữa,Nhảy cóc trạng thái từ OPEN sang IN_PROGRESS mà chưa ACK; server chặn và báo lỗi quy trình,Quản lý máy trạng thái hữu hạn (State Machine) của sự cố,Quy trình chuyển đổi trạng thái phải tuân thủ nghiêm ngặt OPEN -> ACK -> IN_PROGRESS -> RESOLVED,Tại sao không cho phép đóng sự cố trực tiếp từ trạng thái OPEN?,Ảnh chụp màn hình sự cố ở trạng thái IN_PROGRESS,CHƯA LÀM
LG-C-007,P0,W3,C,B,B,P0,Admin.Command,UI,Nút bấm hoàn tất sửa Resolve,Lập trình sự kiện bấm nút Resolve; mở dialog yêu cầu nhập ghi chú khắc phục; gửi lệnh đóng sự cố lên Central.,15,16,P0 Core,2.0,0.5,2.5,DashboardForm.cs (btnResolve_Click handler & resolution dialog),"INCIDENT_RESOLVE payload, resolutionNote required",LG-C-006,LG-B-007,TEST-C07,"Nhập ghi chú sửa chữa, bấm Resolve; kiểm tra sự cố được đóng thành công",Bắt buộc nhập ghi chú khắc phục; sự cố chuyển sang RESOLVED và ẩn khỏi bảng đang xử lý,Người dùng để trống ghi chú; client chặn và nhắc nhở trước khi gửi lệnh lên server,Ràng buộc dữ liệu biểu mẫu (Form Validation) trước khi gửi mạng,Kiểm tra tính hợp lệ của dữ liệu ngay tại giao diện giúp tiết kiệm băng thông và giảm tải xử lý lỗi cho server,Điều gì xảy ra nếu server từ chối đóng sự cố vì phần cứng vẫn đang quá tải?,Ảnh chụp dialog đóng sự cố và bảng cập nhật,CHƯA LÀM
LG-C-008,P0,W4,C,B,B,P0,Admin.UI,UI,Thêm cột và nút phân công người sửa Assign,Thêm cột Người xử lý trên DataGridView sự cố; hộp thoại popup chọn kỹ thuật viên từ danh sách và gửi lệnh INCIDENT_ASSIGN.,17,18,P0 Core,2.5,0.5,3.0,DashboardForm.cs (Assignment UI & dialog),"INCIDENT_ASSIGN payload, AssignedToUserId",LG-C-007,LG-B-009,TEST-C08,"Bấm nút Assign trên một sự cố, chọn kỹ thuật viên; kiểm tra tên người xử lý hiện lên bảng",Cột Người xử lý hiển thị đúng tên kỹ thuật viên được chọn; đồng bộ tới mọi máy Admin khác,Mất danh sách kỹ thuật viên; fallback tải lại danh sách từ server,Đồng bộ giao diện thời gian thực giữa nhiều máy quản trị,"Khi một Admin thực hiện gán việc, server phát sự kiện cập nhật tới tất cả các Admin đang kết nối để cùng đổi giao diện",Làm thế nào để tránh cập nhật đè khi 2 Admin cùng mở hộp thoại gán việc?,Ảnh chụp màn hình popup phân công kỹ thuật viên,CHƯA LÀM
LG-C-010,P0,W4,C,B,B,P0,Admin.UI,UI,Khóa nút bấm theo phân quyền Viewer,"Khi người dùng đăng nhập tài khoản có quyền Viewer, tự động làm mờ (Enabled=false) toàn bộ các nút tác vụ sự cố (ACK, Start, Resolve, Assign).",19,20,P0 Core,2.0,0.5,2.5,DashboardForm.cs (Role-based UI enable/disable),Role: Viewer -> buttons disabled; Operator/Admin -> buttons enabled,LG-C-008,LG-B-004,TEST-C10,Đăng nhập tài khoản Viewer; kiểm tra các nút bấm bị vô hiệu hóa,Viewer xem được toàn bộ bảng số liệu nhưng không thể click bất kỳ nút thao tác nào,Quên vô hiệu hóa phím tắt hoặc context menu; kiểm tra khóa toàn diện,Trải nghiệm người dùng theo vai trò phân quyền (Role-based UX),Ẩn hoặc làm mờ các tính năng người dùng không có quyền giúp giao diện rõ ràng và ngăn chặn lỗi người dùng,Tại sao vẫn cần server kiểm tra quyền dù UI đã khóa nút bấm?,Ảnh chụp giao diện khi đăng nhập vai trò Viewer (nút mờ),CHƯA LÀM
LG-C-011,P0,W4,C,B,B,P0,Admin.UI,UI,Hiển thị thông báo lỗi rõ ràng khi máy chủ từ chối,"Bắt các mã lỗi canonical từ Central Server (như xung đột OCC 409 ERR_CONCURRENCY_VIOLATION, ERR_FORBIDDEN); hiển thị hộp thoại tiếng Việt thân thiện và tự động refresh dữ liệu.",21,22,P0 Core,2.0,0.5,2.5,DashboardForm.cs (Error dialog & refresh),"ErrorCodes handling, Friendly Vietnamese MessageBox, Auto-refresh data",LG-C-010,LG-B-007,TEST-C11,Kích hoạt xung đột dữ liệu giữa 2 Admin; quan sát hộp thoại báo lỗi trên màn hình,Hiện popup tiếng Việt giải thích rõ lý do; tự động nạp lại dữ liệu mới nhất khi bấm OK,Hiện mã lỗi thô hoặc chuỗi stack trace làm người dùng hoang mang; dịch mã lỗi thành thông điệp dễ hiểu,Xử lý lỗi người dùng thân thiện (Graceful Error Presentation),Không bao giờ để lộ lỗi kỹ thuật thô cho người dùng; cung cấp hướng dẫn khắc phục cụ thể,"Khi gặp lỗi tranh chấp dữ liệu OCC, ứng dụng nên làm gì tiếp theo?",Ảnh chụp hộp thoại báo lỗi tiếng Việt thân thiện,CHƯA LÀM
LG-D-001,P0,W1,D,A,A,P0,Scale.Study,Networking,Chạy thử và hiểu giao thức TCP,"Chạy lệnh dotnet test, đọc hiểu FrameCodec.cs và 16 file mẫu JSON trong thư mục fixtures; nắm vững cấu trúc phong bì 6 trường.",1,3,P0 Core,2.5,0.5,3.0,Báo cáo tìm hiểu giao thức & fixtures,"FrameCodec, WireEnvelope, 16 Fixtures JSON","LG-A-001, LG-A-002",None,TEST-D01,Chạy toàn bộ unit test giao thức và giải thích được ý nghĩa từng trường JSON,Hiểu rõ tại sao cần 4 byte length-prefix; phân biệt được các loại bản tin,Nhầm lẫn giữa JSON string và byte stream; rà soát kỹ quy trình tuần tự hóa,Cấu trúc phong bì giao thức và đóng khung TCP,Mỗi gói tin gồm 4 byte độ dài Big-Endian đi trước chuỗi UTF-8 JSON phong bì 6 trường,Tại sao không dùng ký tự xuống dòng newline làm ranh giới gói tin JSON?,Báo cáo tóm tắt cấu trúc gói tin,CHƯA LÀM
LG-D-002,P0,W1,D,A,A,P0,Scale.Harness,Networking,Viết thử chương trình TCP Echo đơn giản,Tự viết một Console app nhỏ trong thư mục tools/ mở cổng Socket TCP nhận chuỗi bất kỳ rồi gửi trả lại để làm quen với Socket trong C#.,3,5,P0 Core,3.0,0.5,3.5,tools/TcpEcho/Program.cs,"TcpListener, TcpClient, NetworkStream echo loop",LG-D-001,None,TEST-D02,"Chạy TCP Echo, dùng telnet gửi chuỗi và kiểm tra nhận lại đúng nội dung",Nhận và trả lại dữ liệu chính xác; xử lý đóng socket an toàn khi client ngắt kết nối,Ngoại lệ khi client ngắt đột ngột; bắt IOException và EndOfStreamException,Nguyên lý hoạt động của máy chủ TCP Echo,Đọc dữ liệu từ NetworkStream vào mảng byte đệm và ghi ngược lại chính luồng đó,Làm thế nào để máy chủ phục vụ nhiều client cùng lúc?,Mã nguồn chương trình TCP Echo trong tools/,CHƯA LÀM
LG-D-003,P0,W2,D,A,A,P0,Scale.Relay,Networking,Thử nghiệm chuyển tiếp gói tin TCP Relay,"Viết chương trình trong tools/ nhận gói tin từ Client, cho vào BoundedChannelOptions(100) với FullMode.Wait và chuyển tiếp sang Server đích.",6,8,P0 Core,3.0,0.5,3.5,tools/TcpRelay/Program.cs,"Channel<byte[]> Bounded(100), FullMode.Wait, Duplex relay",LG-D-002,None,TEST-D03,Gửi gói tin qua trạm Relay trung gian; kiểm tra Server đích nhận nguyên vẹn frame,Chuyển tiếp 2 chiều thông suốt; áp dụng hàng đợi Bounded 100 và FullMode.Wait chống tràn RAM,Tràn bộ nhớ khi phía nhận xử lý chậm; FullMode.Wait làm chậm producer tự nhiên,Cơ chế trung chuyển dữ liệu (Relay) và kiểm soát áp lực ngược (Backpressure),"Hàng đợi có giới hạn để bộ nhớ không tăng vô hạn. Khi hàng đợi đầy, producer phải chờ để hệ thống tự giảm tốc",Tại sao chọn FullMode.Wait mà không drop gói tin trong kênh truyền dữ liệu đáng tin cậy?,Mã nguồn TCP Relay và log chuyển tiếp gói tin,CHƯA LÀM
LG-D-004,P1,W4,D,A,A,P1,Scale.Gateway,Gateway,Tạo dự án LabGuard.Gateway (Dự kiến),Bộ cân bằng tải L4 TCP phân phối kết nối từ nhiều Agent vào các node Central/Collector theo thuật toán Least-Connections.,16,18,P1 Scale,4.0,1.0,5.0,src/LabGuard.Gateway/ (Dự kiến triển khai sau M4),"L4 TCP load balancer, Least-Connections admission","LG-D-003, LG-B-001",MVP Core stable,TEST-D04,Kết nối nhiều client qua Gateway; kiểm tra phân bổ kết nối đều giữa các server,Cân bằng tải mượt mà; phát hiện và loại bỏ node server bị chết khỏi danh sách định tuyến,Gửi client vào server đã chết; kiểm tra health check định kỳ,Cân bằng tải tầng giao vận (L4 Load Balancing),"Phân phối kết nối TCP thô ở tầng 4 mà không cần phân tích nội dung gói tin ứng dụng, giúp đạt thông lượng tối đa",So sánh ưu nhược điểm giữa L4 và L7 load balancing?,Kiến trúc thiết kế Gateway và kịch bản thử tải,CHƯA LÀM
LG-D-005,P1,W4,D,B,B,P1,Scale.Collector,Collector,Tạo dự án LabGuard.Collector (Dự kiến),Trạm gom dữ liệu phân tán tiếp nhận kết nối từ hàng chục máy trạm và dồn luồng về Central Server để giảm tải kết nối.,19,21,P1 Scale,4.0,1.0,5.0,src/LabGuard.Collector/ (Dự kiến triển khai sau M4),"Upstream multiplexing, Bounded ingress buffer",LG-D-004,MVP Core stable,TEST-D05,Gửi telemetry qua Collector; kiểm tra Central nhận đầy đủ dữ liệu,Dồn nhiều luồng client thành 1 kết nối duy nhất về Central; bảo toàn nguyên vẹn bản tin,Nghẽn cổ chai tại trạm Collector; áp dụng bounded buffer và async pipeline,Kiến trúc thu gom dữ liệu phân tán (Telemetry Collection Architecture),Collector đóng vai trò trạm đệm trung gian giảm áp lực mở kết nối và I/O đồng thời lên máy chủ trung tâm,Làm thế nào trả ACK về đúng client khi gom nhiều kết nối?,Kiến trúc Collector và benchmark lưu lượng,CHƯA LÀM
LG-D-006,P1,W5,D,A,A,P1,Scale.Simulator,Testing,Viết logic sinh tải 20–50 máy trạm cho LabGuard.Simulator (Dự kiến),Phát triển công cụ LabGuard.Simulator giả lập 20–50 máy trạm gửi nhịp tim và số liệu đồng thời để kiểm tra áp lực chịu tải của hệ thống.,22,24,Test/Harness,3.5,0.5,4.0,src/LabGuard.Simulator/ (Dự kiến triển khai sau M4),"20-50 concurrent TCP sockets, heartbeat 5s, telemetry 10s",LG-D-003,MVP Core stable,TEST-D06,Kích hoạt Simulator tạo 50 máy ảo gửi tin liên tục 15 phút tới Central,Hệ thống chịu tải ổn định; không bị rò rỉ bộ nhớ; biểu đồ hiển thị mượt mà trên Admin,Cạn kiệt socket port trên máy chạy simulator; quản lý vòng đời socket cẩn thận,Kỹ thuật giả lập tải mạng quy mô lớn,Dùng async task nhẹ nhàng thay vì thread nặng để một máy tính thông thường có thể mô phỏng hàng chục máy trạm,Sự khác biệt giữa tải giả lập trên một máy và mạng thật phân tán?,Báo cáo kiểm thử tải với Simulator 50 máy,CHƯA LÀM
